# Artificial consciousness project

How a schedule from GanttProject changed from version to version. A marks actual dates.

## Version 1 (saved 2015-04-27)

Note of the change: redraw project plan

| ID | WBS | Task | Duration | Start | Finish | Predecessors |
| --- | --- | --- | --- | --- | --- | --- |
| 1 |  | Team forming | 20d | 2015-06-01 | 2015-06-26 |  |
| 2 | 2 | **Theoretical model of consciousness** | 380d | 2015-06-29 | 2016-12-09 | 1 |
| 3 |  | Scientific sources review | 60d | 2015-06-29 | 2015-09-18 |  |
| 4 |  | Analysis | 40d | 2015-09-21 | 2015-11-13 | 3 |
| 5 |  | Model development | 40d | 2015-11-16 | 2016-01-08 | 4 |
| 6 |  | Prototype version 1 | 60d | 2016-01-11 | 2016-04-01 | 5 |
| 7 |  | Testing and experimenting | 20d | 2016-04-04 | 2016-04-29 | 6 |
| 8 |  | Analysis of results | 20d | 2016-05-02 | 2016-05-27 | 7 |
| 9 |  | Model update | 30d | 2016-05-30 | 2016-07-08 | 8 |
| 10 |  | Prototype version 2 | 60d | 2016-07-11 | 2016-09-30 | 9 |
| 11 |  | Testing and experiments | 30d | 2016-10-03 | 2016-11-11 | 10 |
| 12 |  | Analysis of results | 20d | 2016-11-14 | 2016-12-09 | 11 |
| 13 | 3 | **NEUCOGAR** | 350d | 2015-06-29 | 2016-10-28 | 1 |
| 14 |  | Neuromodulation Architecture specification | 1d | 2015-06-29 | 2015-06-29 |  |
| 15 | 3.2 | **Dopamine** | 110d | 2015-06-29 | 2015-11-27 |  |
| 16 |  | Basal ganglia simple model implementation | 20d | 2015-06-29 | 2015-07-24 |  |
| 17 |  | Basal ganglia with extended feedback loops | 30d | 2015-07-27 | 2015-09-04 | 16 |
| 18 |  | Basal ganglia with feedback loops and realistic number of neurons | 60d | 2015-09-07 | 2015-11-27 | 17 |
| 19 | 3.3 | **Serotonin** | 110d | 2015-11-30 | 2016-04-29 | 15 |
| 20 |  | Serotonin neuron/synapse | 30d | 2015-11-30 | 2016-01-08 |  |
| 21 |  | Serotonin pathway reduced number of neurons | 20d | 2016-01-11 | 2016-02-05 | 20 |
| 22 |  | Serotonin pathway relistic scale | 60d | 2016-02-08 | 2016-04-29 | 21 |
| 23 | 3.4 | **Noradrenaline** | 130d | 2016-05-02 | 2016-10-28 | 19 |
| 24 |  | Noradrenaline neuron/synapse model | 20d | 2016-05-02 | 2016-05-27 |  |
| 25 |  | Noradrenaline neuron/synapse | 30d | 2016-05-30 | 2016-07-08 | 24 |
| 26 |  | Noradrenaline projections reduced number of neurons | 20d | 2016-07-11 | 2016-08-05 | 25 |
| 27 |  | Noradrenaline projections realistic scales | 60d | 2016-08-08 | 2016-10-28 | 26 |
| 28 | 4 | **Cortical column topology** | 180d | 2015-06-29 | 2016-03-04 | 1 |
| 29 |  | Filetering | 30d | 2015-06-29 | 2015-08-07 |  |
| 30 |  | Clastering | 60d | 2015-08-10 | 2015-10-30 | 29 |
| 31 |  | Spikes casuality | 90d | 2015-11-02 | 2016-03-04 | 30 |
| 32 |  | Publications | 255d | 2016-01-11 | 2016-12-30 | 1, 5 |

## Version 2 (saved 2015-05-07)

Note of the change: updated iProject

Last finish 2016-12-30 → 2017-06-01 (+153d).

Added:

| ID | Task | Duration | Start | Finish | Predecessors |
| --- | --- | --- | --- | --- | --- |
| 13 | Model update | 30d | 2016-12-12 | 2017-01-20 | 12 |
| 14 | Prototype version 3 | 60d | 2017-01-23 | 2017-04-14 | 13 |
| 15 | Testing and experiments | 20d | 2017-04-17 | 2017-05-12 | 14 |
| 16 | Analysis of results | 10d | 2017-05-15 | 2017-05-26 | 15 |
| 32 | Instinctive reactions | 60d | 2016-10-31 | 2017-01-20 | 27 |
| 33 | Learned reactions | 94d | 2017-01-23 | 2017-06-01 | 32 |
| 34 | Deliberative thinking | 94d | 2017-01-23 | 2017-06-01 | 32 |

Changed:

| ID | Task | Finish | Duration |
| --- | --- | --- | --- |
| 2 | **Theoretical model of consciousness** | 2016-12-09 → 2017-05-26 (+168d) | 380d → 500d |
| 39 | Publications | 2016-12-30 → 2017-06-01 (+153d) | 255d → 364d |
